# CPRO_0.3_2015_Cronograma_de_Vamosya(1)

Schedule from MS Project, 2015-09-01 to 2015-11-17, A marks actual dates.

## Calendars

- Estándar: Mon-Sun 09:00-13:00, 15:00-19:00.

## Resources

| Resource |
| --- |
| Jose Valero |
| Michael Cerna |
| Juan Guerrero |

## Schedule

| ID | WBS | Task | Type | Duration | Start | Finish | Complete | Remaining | Constraint | Resources | Work | Actual work |
| --- | --- | --- | --- | --- | --- | --- | --- | --- | --- | --- | --- | --- |
| 1 | 1 | **Sistema de Inventario Online** |  | 78d | 2015-09-01 A | 2015-11-17 | 99% | 0.33d |  |  | 9928h | 9884.4h |
| 2 | 1.1 | **Proceso de gestión** |  | 78d | 2015-09-01 A | 2015-11-17 | 99% | 0.84d |  |  | 3808h | 3764.4h |
| 3 | 1.1.1 | **Inicio y planificación** |  | 78d | 2015-09-01 A | 2015-11-17 | 99% | 0.86d |  |  | 3696h | 3652.4h |
| 4 | 1.1.1.1 | Revisión de la metodología de trabajo |  | 3d | 2015-09-01 A | 2015-09-03 A | 100% |  |  | Jose Valero | 24h | 24h |
| 5 | 1.1.1.2 | **PP-PMC** |  | 78d | 2015-09-01 A | 2015-11-17 | 99% | 0.18d |  |  | 1760h | 1756h |
| 6 | 1.1.1.2.1 | **Informe de avance quincenal** |  | 76d | 2015-09-01 A | 2015-11-15 A | 100% |  |  |  | 608h | 608h |
| 7 | 1.1.1.2.1.1 | Informe de avance quincenal | manual | 15d | 2015-09-01 A | 2015-09-15 A | 100% |  |  | Jose Valero | 120h | 120h |
| 8 | 1.1.1.2.1.2 | Informe de avance quincenal | manual | 15d | 2015-09-16 A | 2015-09-30 A | 100% |  |  | Jose Valero | 120h | 120h |
| 9 | 1.1.1.2.1.3 | Informe de avance quincenal | manual | 15d | 2015-10-01 A | 2015-10-15 A | 100% |  |  | Jose Valero | 120h | 120h |
| 10 | 1.1.1.2.1.4 | Informe de avance quincenal | manual | 16d | 2015-10-16 A | 2015-10-31 A | 100% |  |  | Jose Valero | 128h | 128h |
| 11 | 1.1.1.2.1.5 | Informe de avance quincenal | manual | 15d | 2015-11-01 A | 2015-11-15 A | 100% |  |  | Jose Valero | 120h | 120h |
| 12 | 1.1.1.2.2 | **Aceptacion Entregables** |  | 57d | 2015-09-22 A | 2015-11-17 A | 100% |  |  |  | 24h | 24h |
| 13 | 1.1.1.2.2.1 | Aceptación Entregable 1 | manual | 1d | 2015-09-22 A | 2015-09-22 A | 100% |  |  | Jose Valero | 8h | 8h |
| 14 | 1.1.1.2.2.2 | Aceptación Entregable 2 | manual | 1d | 2015-10-22 A | 2015-10-22 A | 100% |  |  | Jose Valero | 8h | 8h |
| 15 | 1.1.1.2.2.3 | Aceptación Entregable 3 | manual | 1d | 2015-11-17 A | 2015-11-17 A | 100% |  |  | Jose Valero | 8h | 8h |
| 16 | 1.1.1.2.3 | **Actas De Reunion** |  | 75d | 2015-09-03 A | 2015-11-16 A | 100% |  |  |  | 80h | 80h |
| 17 | 1.1.1.2.3.1 | Acta de reunion Septiembre 1 | manual | 1d | 2015-09-03 A | 2015-09-03 A | 100% |  |  | Jose Valero | 8h | 8h |
| 18 | 1.1.1.2.3.2 | Acta de reunion Septiembre 2 | manual | 1d | 2015-10-12 A | 2015-10-12 A | 100% |  |  | Jose Valero | 8h | 8h |
| 19 | 1.1.1.2.3.3 | Acta de reunion Septiembre 3 | manual | 1d | 2015-09-17 A | 2015-09-17 A | 100% |  |  | Jose Valero | 8h | 8h |
| 20 | 1.1.1.2.3.4 | Acta de reunion Septiembre 4 | manual | 1d | 2015-09-19 A | 2015-09-19 A | 100% |  |  | Jose Valero | 8h | 8h |
| 21 | 1.1.1.2.3.5 | Acta de reunion Octubre 5 | manual | 1d | 2015-10-02 A | 2015-10-02 A | 100% |  |  | Jose Valero | 8h | 8h |
| 22 | 1.1.1.2.3.6 | Acta de reunion Octubre 6 | manual | 1d | 2015-10-04 A | 2015-10-04 A | 100% |  |  | Jose Valero | 8h | 8h |
| 23 | 1.1.1.2.3.7 | Acta de reunion Octubre 7 | manual | 1d | 2015-10-15 A | 2015-10-15 A | 100% |  |  | Jose Valero | 8h | 8h |
| 24 | 1.1.1.2.3.8 | Acta de reunion Noviembre 8 | manual | 1d | 2015-11-03 A | 2015-11-03 A | 100% |  | start no earlier than 2015-11-03 | Jose Valero | 8h | 8h |
| 25 | 1.1.1.2.3.9 | Acta de reunion Noviembre 9 | manual | 1d | 2015-11-10 A | 2015-11-10 A | 100% |  |  | Jose Valero | 8h | 8h |
| 26 | 1.1.1.2.3.10 | Acta de reunion Noviembre 10 | manual | 1d | 2015-11-16 A | 2015-11-16 A | 100% |  |  | Jose Valero | 8h | 8h |

| ID | WBS | Task | Type | Duration | Start | Finish | Complete | Remaining | Actual start | Total slack | Constraint | Resources | Work | Actual work |
| --- | --- | --- | --- | --- | --- | --- | --- | --- | --- | --- | --- | --- | --- | --- |
| 27 | 1.1.1.2.4 | **Plan de Proyecto** |  | 77d | 2015-09-01 A | 2015-11-16 A | 100% |  |  |  |  |  | 536h | 536h |
| 28 | 1.1.1.2.4.1 | Cronograma |  | 4d | 2015-09-01 A | 2015-09-04 A | 100% |  |  |  | finish no earlier than 2015-09-04 | Jose Valero | 32h | 32h |
| 29 | 1.1.1.2.4.2 | Plan de proyecto |  | 61d | 2015-09-17 A | 2015-11-16 A | 100% |  |  |  | finish no earlier than 2015-11-16 | Jose Valero | 488h | 488h |
| 30 | 1.1.1.2.4.3 | Proceso de gestión de proyectos |  | 2d | 2015-09-17 A | 2015-09-18 A | 100% |  |  |  | start no earlier than 2015-09-17 | Jose Valero | 16h | 16h |
| 31 | 1.1.1.2.5 | Registro de riesgos |  | 61d | 2015-09-17 A | 2015-11-16 A | 100% |  |  |  | finish no earlier than 2015-11-16 | Michael Cerna | 488h | 488h |
| 32 | 1.1.1.2.6 | **Presentaciones del Proyecto Sistema Inventario Online** |  | 57d | 2015-09-22 A | 2015-11-17 | 83% | 9.5d |  | 0d |  |  | 24h | 20h |
| 33 | 1.1.1.2.6.1 | **Primera Presentacion** |  | 1d | 2015-09-22 A | 2015-09-22 A | 100% |  |  |  |  |  | 8h | 8h |
| 34 | 1.1.1.2.6.1.1 | Kick off meeting Externo | manual | 1d | 2015-09-22 A | 2015-09-22 A | 100% |  |  |  |  | Jose Valero | 8h | 8h |
| 35 | 1.1.1.2.6.2 | **Segunda Presentacion** |  | 1d | 2015-10-22 A | 2015-10-22 A | 100% |  |  |  |  |  | 8h | 8h |
| 36 | 1.1.1.2.6.2.1 | Kick off meeting Externo | manual | 1d | 2015-10-22 A | 2015-10-22 A | 100% |  |  |  |  | Jose Valero | 8h | 8h |
| 37 | 1.1.1.2.6.3 | **Tercera Presentacion** |  | 1d | 2015-11-17 A | 2015-11-17 | 50% | 0.5d |  | 0d |  |  | 8h | 4h |
| 38 | 1.1.1.2.6.3.1 | Kick off meeting Externo | manual | 1d | 2015-11-17 A | 2015-11-17 | 50% | 0.5d |  |  |  | Jose Valero | 8h | 4h |
| 39 | 1.1.1.3 | **REQM** |  | 48d | 2015-10-01 | 2015-11-17 A | 100% |  | 2015-10-13 |  |  |  | 160h | 160h |
| 40 | 1.1.1.3.1 | Lista maestra de requerimientos |  | 1d | 2015-10-15 A | 2015-10-15 A | 100% |  |  |  | start no earlier than 2015-10-15 | Jose Valero | 8h | 8h |
| 41 | 1.1.1.3.2 | Matriz de trazabilidad |  | 1d | 2015-10-15 A | 2015-10-15 A | 100% |  |  |  | start no earlier than 2015-10-15 | Jose Valero | 8h | 8h |
| 42 | 1.1.1.3.3 | Proceso de gestión de requerimientos |  | 1d | 2015-10-15 A | 2015-10-15 A | 100% |  |  |  | start no earlier than 2015-10-15 | Juan Guerrero | 8h | 8h |
| 43 | 1.1.1.3.4 | Gestion de Requerimientos | manual | 1d | 2015-10-15 A | 2015-10-15 A | 100% |  |  |  |  | Juan Guerrero | 8h | 8h |
| 44 | 1.1.1.3.5 | Solicitud de Cambios a Requerimientos |  | 1d | 2015-10-15 A | 2015-10-15 A | 100% |  |  |  | start no earlier than 2015-10-15 | Juan Guerrero | 8h | 8h |
| 45 | 1.1.1.3.6 | Documento de Analisis Diseño Técnico | manual | 6d | 2015-11-12 A | 2015-11-17 A | 100% |  |  |  |  | Juan Guerrero | 48h | 48h |
| 46 | 1.1.1.3.7 | Documento de diseño funcional | manual | 6d | 2015-11-12 A | 2015-11-17 A | 100% |  |  |  |  | Juan Guerrero | 48h | 48h |
| 47 | 1.1.1.3.8 | Registro de Cambios a Requerimiento |  | 3d | 2015-10-13 A | 2015-10-15 A | 100% |  |  |  | finish no earlier than 2015-10-15 | Juan Guerrero | 24h | 24h |
| 48 | 1.1.1.4 | **PPQA** |  | 48d | 2015-10-01 | 2015-11-17 | 90% | 4.75d | 2015-10-05 |  |  |  | 400h | 360.4h |
| 49 | 1.1.1.4.1 | Proceso de aseguramiento de la calidad | manual | 11d | 2015-10-05 A | 2015-10-15 A | 100% |  |  |  |  | Michael Cerna | 88h | 88h |
| 50 | 1.1.1.4.2 | Matriz de seguimiento Proyectos internos | manual | 3d | 2015-10-20 A | 2015-10-22 A | 100% |  |  |  |  | Michael Cerna | 24h | 24h |
| 51 | 1.1.1.4.3 | Herramientas de gestión | manual | 3d | 2015-10-15 A | 2015-10-17 A | 100% |  |  |  |  | Michael Cerna | 24h | 24h |
| 52 | 1.1.1.4.4 | Chekclist de proyecto | manual | 33d | 2015-10-15 A | 2015-11-16 | 85% | 4.95d |  |  |  | Michael Cerna | 264h | 224.4h |

| ID | WBS | Task | Type | Duration | Start | Finish | Complete | Actual start | Actual finish | Resources | Work | Actual work |
| --- | --- | --- | --- | --- | --- | --- | --- | --- | --- | --- | --- | --- |
| 53 | 1.1.1.5 | **GC** |  | 48d | 2015-10-01 | 2015-11-17 | 100% | 2015-10-15 | 2015-10-24 |  | 72h | 72h |
| 54 | 1.1.1.5.1 | Gestión de la configuración | manual | 1d | 2015-10-15 A | 2015-10-15 A | 100% |  |  | Juan Guerrero | 8h | 8h |
| 55 | 1.1.1.5.2 | Registro de Items de configuración | manual | 2d | 2015-10-15 A | 2015-10-16 A | 100% |  |  | Juan Guerrero | 16h | 16h |
| 56 | 1.1.1.5.3 | Proceso de Gestion de Configuracion | manual | 3d | 2015-10-22 A | 2015-10-24 A | 100% |  |  | Juan Guerrero | 24h | 24h |
| 57 | 1.1.1.5.4 | Formato Solicitud de accesos 1 | manual | 1d | 2015-10-15 A | 2015-10-15 A | 100% |  |  | Juan Guerrero | 8h | 8h |
| 58 | 1.1.1.5.5 | Formato Solicitud de accesos 2 | manual | 1d | 2015-10-15 A | 2015-10-15 A | 100% |  |  | Juan Guerrero | 8h | 8h |
| 59 | 1.1.1.5.6 | Formato Solicitud de accesos 3 | manual | 1d | 2015-10-15 A | 2015-10-15 A | 100% |  |  | Juan Guerrero | 8h | 8h |
| 60 | 1.1.1.6 | **Área MA** |  | 48d | 2015-10-01 | 2015-11-17 | 100% | 2015-10-15 | 2015-11-16 |  | 1280h | 1280h |
| 61 | 1.1.1.6.1 | Registro de Riesgos | manual | 33d | 2015-10-15 A | 2015-11-16 A | 100% |  |  |  |  |  |
| 62 | 1.1.1.6.2 | Indice cambios items configuracion | manual | 32d | 2015-10-15 A | 2015-11-15 A | 100% |  |  | Jose Valero | 256h | 256h |
| 63 | 1.1.1.6.3 | Procesos de Medicion | manual | 32d | 2015-10-15 A | 2015-11-15 A | 100% |  |  | Jose Valero | 256h | 256h |
| 64 | 1.1.1.6.4 | Numero de N conformidades QA del Producto | manual | 32d | 2015-10-15 A | 2015-11-15 A | 100% |  |  | Jose Valero | 256h | 256h |
| 65 | 1.1.1.6.5 | Tablero metrica | manual | 32d | 2015-10-15 A | 2015-11-15 A | 100% |  |  | Jose Valero | 256h | 256h |
| 66 | 1.1.1.6.6 | Volatidad de Requerimientos | manual | 32d | 2015-10-15 A | 2015-11-15 A | 100% |  |  | Jose Valero | 256h | 256h |
| 67 | 1.1.2 | **Cierre** |  | 15d | 2015-11-03 A | 2015-11-17 | 100% |  | 2015-11-16 |  | 112h | 112h |
| 68 | 1.1.2.1 | Elaboración del acta de cierre | manual | 14d | 2015-11-03 A | 2015-11-16 A | 100% |  |  | Jose Valero | 112h | 112h |
| 69 | 1.2 | **Proceso de Ingenieria** |  | 78d | 2015-09-01 A | 2015-11-17 A | 100% |  |  |  | 6120h | 6120h |
| 70 | 1.2.1 | **Sistema de Inventario Online** |  | 78d | 2015-09-01 A | 2015-11-17 A | 100% |  |  |  | 6120h | 6120h |
| 71 | 1.2.1.1 | **Construccion** |  | 78d | 2015-09-01 A | 2015-11-17 A | 100% |  |  |  | 6120h | 6120h |
| 72 | 1.2.1.1.1 | **Modulo de Registro de Usuarios** |  | 22d | 2015-09-01 | 2015-09-22 A | 100% | 2015-09-02 |  |  | 504h | 504h |
| 73 | 1.2.1.1.1.1 | Implementacion del Registro de Usuarios | manual | 21d | 2015-09-02 A | 2015-09-22 A | 100% |  |  | Juan Guerrero | 168h | 168h |
| 74 | 1.2.1.1.1.2 | Interaz de Registro | manual | 21d | 2015-09-02 A | 2015-09-22 A | 100% |  |  | Juan Guerrero | 168h | 168h |
| 75 | 1.2.1.1.1.3 | Base de Datos | manual | 21d | 2015-09-02 A | 2015-09-22 A | 100% |  |  | Juan Guerrero | 168h | 168h |
| 76 | 1.2.1.1.2 | **Modulo de Login de usuarios** |  | 52d | 2015-09-01 A | 2015-10-22 A | 100% |  |  |  | 1248h | 1248h |
| 77 | 1.2.1.1.2.1 | Validacion de usuario y contraseña | manual | 52d | 2015-09-01 A | 2015-10-22 A | 100% |  |  | Juan Guerrero | 416h | 416h |
| 78 | 1.2.1.1.2.2 | Interfaz con diseños deportivos | manual | 52d | 2015-09-01 A | 2015-10-22 A | 100% |  |  | Juan Guerrero | 416h | 416h |
| 79 | 1.2.1.1.2.3 | Implementacion de Logo Sport Perú | manual | 52d | 2015-09-01 A | 2015-10-22 A | 100% |  |  | Juan Guerrero | 416h | 416h |

| ID | WBS | Task | Type | Duration | Start | Finish | Complete | Resources | Work | Actual work |
| --- | --- | --- | --- | --- | --- | --- | --- | --- | --- | --- |
| 80 | 1.2.1.1.3 | **Modulo de Pagina Principal** |  | 78d | 2015-09-01 A | 2015-11-17 A | 100% |  | 2496h | 2496h |
| 81 | 1.2.1.1.3.1 | Interfaz actractiva para una interaccion con el usuario (Colores) | manual | 78d | 2015-09-01 A | 2015-11-17 A | 100% | Juan Guerrero | 624h | 624h |
| 82 | 1.2.1.1.3.2 | Cabezera con enlaces a las tablas | manual | 78d | 2015-09-01 A | 2015-11-17 A | 100% | Juan Guerrero | 624h | 624h |
| 83 | 1.2.1.1.3.3 | Pie de pagina con Datos de Sport Perú | manual | 78d | 2015-09-01 A | 2015-11-17 A | 100% | Juan Guerrero | 624h | 624h |
| 84 | 1.2.1.1.3.4 | Logo de Sport Perú | manual | 78d | 2015-09-01 A | 2015-11-17 A | 100% | Juan Guerrero | 624h | 624h |
| 85 | 1.2.1.1.4 | **Modulo de Tablas** |  | 78d | 2015-09-01 A | 2015-11-17 A | 100% |  | 1872h | 1872h |
| 86 | 1.2.1.1.4.1 | Creacion de tablas | manual | 78d | 2015-09-01 A | 2015-11-17 A | 100% | Juan Guerrero | 624h | 624h |
| 87 | 1.2.1.1.4.2 | Actualizacion de tablas (aumentar y quitar) | manual | 78d | 2015-09-01 A | 2015-11-17 A | 100% | Juan Guerrero | 624h | 624h |
| 88 | 1.2.1.1.4.3 | Interfaz actractiva para una mejor interaccion con las tablas | manual | 78d | 2015-09-01 A | 2015-11-17 A | 100% | Juan Guerrero | 624h | 624h |
